# Cronograma_Proy

Schedule from MS Project, 2017-08-28 to 2017-11-13, A marks actual dates.

## Calendars

- Caldendario UTP: Mon-Sat 09:00-13:00, 15:00-19:00; Sun off. Exceptions (off unless hours are given): 2017-10-08 (Combate de Angamos), 2017-11-01 (Todos los Santos).

## Resources

| Resource |
| --- |
| keyla |
| david |
| samuel |
| freddy |
| f |

## Schedule

| ID | WBS | Task | Type | Duration | Start | Finish | Predecessors | Complete | Remaining | Actual start | Actual finish | Constraint | Resources | Work | Actual work |
| --- | --- | --- | --- | --- | --- | --- | --- | --- | --- | --- | --- | --- | --- | --- | --- |
| 1 | 1 | **Proyecto Staradmin** |  | 66d | 2017-08-28 08:00 | 2017-11-13 18:00 |  | 33% | 44.24d | 2017-08-28 09:00 |  |  |  | 1141.6h | 527.6h |
| 2 | 1.1 | **Proceso de Gestión** |  | 54d | 2017-08-28 09:00 A | 2017-10-28 19:00 |  | 71% | 15.52d |  |  |  |  | 532h | 334h |
| 3 | 1.1.1 | **Inicio** |  | 5d | 2017-08-28 09:00 | 2017-09-01 19:00 |  |  |  |  |  |  |  | 160h |  |
| 4 | 1.1.1.1 | Revisión de la Metodología del Trabajo | manual | 5d | 2017-08-28 09:00 | 2017-09-01 19:00 |  |  |  |  |  |  | freddy; keyla; samuel; david | 160h |  |
| 5 | 1.1.2 | **Planificación** |  | 9d | 2017-09-04 08:00 | 2017-09-13 18:00 |  | 100% |  | 2017-09-04 09:00 | 2017-09-12 19:00 |  |  | 152h | 152h |
| 6 | 1.1.2.1 | **Plan del Proyecto** |  | 8d | 2017-09-04 09:00 A | 2017-09-12 19:00 A |  | 100% |  |  |  |  |  | 152h | 152h |
| 7 | 1.1.2.1.1 | **Elaboración del Plan del Proyecto** |  | 6d | 2017-09-04 09:00 A | 2017-09-09 19:00 A |  | 100% |  |  |  |  |  | 88h | 88h |
| 8 | 1.1.2.1.1.1 | Definir nombre del proyecto |  | 0.5d | 2017-09-04 09:00 A | 2017-09-04 13:00 A |  | 100% |  |  |  | start no earlier than 2017-09-04 08:00 | freddy | 4h | 4h |
| 9 | 1.1.2.1.1.2 | Definir objetivos del proyecto |  | 0.5d | 2017-09-04 15:00 A | 2017-09-04 19:00 A | 8 | 100% |  |  |  |  | freddy | 4h | 4h |
| 10 | 1.1.2.1.1.3 | Elaboración del cronograma detallado |  | 5d | 2017-09-04 09:00 A | 2017-09-08 19:00 A |  | 100% |  |  |  |  | samuel | 40h | 40h |
| 11 | 1.1.2.1.1.4 | Necesidades del Proyecto |  | 1d | 2017-09-05 09:00 A | 2017-09-05 19:00 A | 9 | 100% |  |  |  |  | freddy | 8h | 8h |
| 12 | 1.1.2.1.1.5 | Identificación de Riesgos del Proyecto |  | 1d | 2017-09-06 09:00 A | 2017-09-06 19:00 A | 11 | 100% |  |  |  |  | freddy | 8h | 8h |
| 13 | 1.1.2.1.1.6 | Elaborar Documentos de Riesgo del Proyecto |  | 1d | 2017-09-07 09:00 A | 2017-09-07 19:00 A | 12 | 100% |  |  |  |  | freddy | 8h | 8h |
| 14 | 1.1.2.1.1.7 | Elaborar Documentos del Plan del Proyecto |  | 1d | 2017-09-08 09:00 A | 2017-09-08 19:00 A | 13 | 100% |  |  |  |  | freddy | 8h | 8h |
| 15 | 1.1.2.1.1.8 | Traspaso de Información |  | 1d | 2017-09-09 09:00 A | 2017-09-09 19:00 A | 14 | 100% |  |  |  |  | freddy | 8h | 8h |
| 16 | 1.1.2.1.2 | **Revisión Interna del Plan del Proyecto** |  | 2d | 2017-09-11 09:00 A | 2017-09-12 19:00 A |  | 100% |  |  |  |  |  | 24h | 24h |
| 17 | 1.1.2.1.2.1 | Revisión del Plan del Proyecto por el equipo del Proyecto |  | 1d | 2017-09-11 09:00 A | 2017-09-11 19:00 A |  | 100% |  |  |  | start no earlier than 2017-09-11 08:00 |  |  |  |
| 18 | 1.1.2.1.2.2 | Ajustes al Plan del Proyecto |  | 1d | 2017-09-11 09:00 A | 2017-09-11 19:00 A |  | 100% |  |  |  | start no earlier than 2017-09-11 08:00 | freddy | 8h | 8h |
| 19 | 1.1.2.1.2.3 | Elaborar acta de REVISIÓN INTERNA DEL PLAN DEL PROYECTO |  | 1d | 2017-09-11 09:00 A | 2017-09-11 19:00 A |  | 100% |  |  |  | start no earlier than 2017-09-11 08:00 | samuel | 8h | 8h |
| 20 | 1.1.2.1.2.4 | Traspaso de Información |  | 1d | 2017-09-12 09:00 A | 2017-09-12 19:00 A | 19 | 100% |  |  |  |  | samuel | 8h | 8h |
| 21 | 1.1.2.1.3 | **Gestión de la Configuración** |  | 5d | 2017-09-04 09:00 A | 2017-09-08 19:00 A |  | 100% |  |  |  |  |  | 40h | 40h |
| 22 | 1.1.2.1.3.1 | Establecer Repositorio de Datos |  | 2d | 2017-09-04 09:00 A | 2017-09-05 19:00 A |  | 100% |  |  |  |  | keyla | 16h | 16h |
| 23 | 1.1.2.1.3.2 | Asignar Gestión de Configuración |  | 2d | 2017-09-06 09:00 A | 2017-09-07 19:00 A | 22 | 100% |  |  |  |  | keyla | 16h | 16h |
| 24 | 1.1.2.1.3.3 | Elaborar Solicitud de Accesos |  | 1d | 2017-09-08 09:00 A | 2017-09-08 19:00 A | 23 | 100% |  |  |  |  | keyla | 8h | 8h |

| ID | WBS | Task | Duration | Start | Finish | Predecessors | Complete | Remaining | Actual start | Total slack | Free slack | Constraint | Resources | Work | Actual work |
| --- | --- | --- | --- | --- | --- | --- | --- | --- | --- | --- | --- | --- | --- | --- | --- |
| 25 | 1.1.3 | **Asignación, Ejecución, Seguimiento y Control** | 39d | 2017-09-13 08:00 | 2017-10-27 18:00 |  | 83% | 6.81d | 2017-09-13 09:00 |  |  |  |  | 220h | 182h |
| 26 | 1.1.3.1 | **Desarrollo del Área de Procesos PP-PMC** | 3d | 2017-09-13 09:00 A | 2017-09-15 19:00 A |  | 100% |  |  |  |  |  |  | 48h | 48h |
| 27 | 1.1.3.1.1 | Elaborar Plantilla de Registro Riesgos | 1d | 2017-09-13 09:00 A | 2017-09-13 19:00 A |  | 100% |  |  |  |  | start no earlier than 2017-09-13 08:00 | samuel | 8h | 8h |
| 28 | 1.1.3.1.2 | Elaborar Plantilla de Informe de Avances Semanales | 1d | 2017-09-14 09:00 A | 2017-09-14 19:00 A | 27 | 100% |  |  |  |  |  | samuel | 8h | 8h |
| 29 | 1.1.3.1.3 | Elaborar Plantillas de Actas de Reunión Interna Semanal | 1d | 2017-09-13 09:00 A | 2017-09-13 19:00 A |  | 100% |  |  |  |  | start no earlier than 2017-09-13 08:00 | freddy | 8h | 8h |
| 30 | 1.1.3.1.4 | Elaborar Formato de Aceptación de Entregables | 1d | 2017-09-14 09:00 A | 2017-09-14 19:00 A | 29 | 100% |  |  |  |  | start no earlier than 2017-09-14 08:00 | freddy | 8h | 8h |
| 31 | 1.1.3.1.5 | Elaborar Documento de Proceso de Gestión de Proyectos | 1d | 2017-09-15 09:00 A | 2017-09-15 19:00 A | 30 | 100% |  |  |  |  | start no earlier than 2017-09-15 08:00 | samuel | 8h | 8h |
| 32 | 1.1.3.1.6 | Traspaso de Información | 1d | 2017-09-15 09:00 A | 2017-09-15 19:00 A | 27 | 100% |  |  |  |  | start no earlier than 2017-09-15 08:00 | freddy | 8h | 8h |
| 33 | 1.1.3.2 | **Desarrollo del Área de Procesos REQM** | 8d | 2017-09-25 08:00 | 2017-10-03 18:00 A |  | 100% |  | 2017-09-25 09:00 |  |  |  |  | 48h | 48h |
| 34 | 1.1.3.2.1 | Elaborar Formato Acta Reunión Cliente | 1d | 2017-09-25 09:00 A | 2017-09-25 19:00 A |  | 100% |  |  |  |  | start no earlier than 2017-09-25 08:00 | samuel | 8h | 8h |
| 35 | 1.1.3.2.2 | Elaborar Formato de Matriz de Trazabilidad de Requerimientos | 1d | 2017-09-26 09:00 A | 2017-09-26 19:00 A | 34 | 100% |  |  |  |  |  | samuel | 8h | 8h |
| 36 | 1.1.3.2.3 | Elaborar Solicitud de Cambios de Requerimentos | 1d | 2017-09-27 09:00 A | 2017-09-27 19:00 A | 35 | 100% |  |  |  |  |  | samuel | 8h | 8h |
| 37 | 1.1.3.2.4 | Elaborar Registro de Cambios de Requerimientos | 1d | 2017-09-28 09:00 A | 2017-09-28 19:00 A | 36 | 100% |  |  |  |  |  | samuel | 8h | 8h |
| 38 | 1.1.3.2.5 | Elaborar Lista Maestra de Requerimientos | 1d | 2017-09-25 09:00 A | 2017-09-25 19:00 A |  | 100% |  |  |  |  |  |  |  |  |
| 39 | 1.1.3.2.6 | Proceso Gestión de Requerimientos | 1d | 2017-09-25 09:00 A | 2017-09-25 19:00 A |  | 100% |  |  |  |  | start no earlier than 2017-09-25 08:00 | freddy | 8h | 8h |
| 40 | 1.1.3.2.7 | Traspaso de Información | 1d | 2017-10-02 18:00 A | 2017-10-03 18:00 A | 39 | 100% |  |  |  |  | finish no earlier than 2017-10-03 18:00 | freddy | 8h | 8h |
| 41 | 1.1.3.3 | **Desarrollo del Proceso MA** | 14d | 2017-10-02 08:00 | 2017-10-17 18:00 |  | 80% | 2.75d | 2017-10-02 09:00 |  |  |  |  | 52h | 42h |
| 42 | 1.1.3.3.1 | Elaborar Tablero de Control de Métricas del Proyecto | 9d | 2017-10-02 09:00 A | 2017-10-11 19:00 |  | 80% | 1.8d |  | 0.8d | 0d | start no earlier than 2017-10-02 08:00 |  |  |  |
| 43 | 1.1.3.3.2 | Elaborar Metrica de Exposicion al Riesgo | 1d | 2017-10-12 09:00 A | 2017-10-12 19:00 | 42 | 80% | 0.2d |  | 25.88d |  |  | freddy | 8h | 6.4h |
| 44 | 1.1.3.3.3 | Elaborar Metrica de Volatilidad de Requerimientos | 1d | 2017-10-12 09:00 A | 2017-10-12 19:00 | 42 | 80% | 0.2d |  | 25.88d |  |  | david | 8h | 6.4h |
| 45 | 1.1.3.3.4 | Elaborar Ficha Métrica de Número de No Conformidades de Calidad-Producto | 4d | 2017-10-12 09:00 A | 2017-10-16 19:00 | 42 | 80% | 0.8d |  | 0.45d | 0d | start no earlier than 2017-10-12 08:00 | samuel | 32h | 25.6h |
| 46 | 1.1.3.3.5 | Traspaso de Información | 0.5d | 2017-10-17 09:00 A | 2017-10-17 13:00 | 45 | 90% | 0.05d |  | 22.38d |  | start no earlier than 2017-10-17 08:00 | samuel | 4h | 3.6h |
| 47 | 1.1.3.4 | **Desarrollo del Proceso PPQA** | 8d | 2017-10-09 08:00 | 2017-10-17 18:00 A |  | 100% |  | 2017-10-09 09:00 |  |  |  |  | 44h | 44h |
| 48 | 1.1.3.4.1 | Elaborar Herramientas de Gestión de Calidad-Productos | 2d | 2017-10-09 09:00 A | 2017-10-10 19:00 A |  | 100% |  |  |  |  | start no earlier than 2017-10-09 08:00 | david | 16h | 16h |
| 49 | 1.1.3.4.2 | Elaborar Cheklist de Proyecto | 2d | 2017-10-09 09:00 A | 2017-10-10 19:00 A |  | 100% |  |  |  |  |  | freddy | 16h | 16h |
| 50 | 1.1.3.4.3 | Elaborar Proceso de Aseguramiento de la Calidad-Producto | 1d | 2017-10-16 09:00 A | 2017-10-16 19:00 A |  | 100% |  |  |  |  | start no earlier than 2017-10-16 08:00 | keyla | 8h | 8h |
| 51 | 1.1.3.4.4 | Traspaso de Información | 0.5d | 2017-10-17 12:00 A | 2017-10-17 18:00 A | 50 | 100% |  |  |  |  | finish no earlier than 2017-10-17 18:00 | freddy | 4h | 4h |

| ID | WBS | Task | Duration | Start | Finish | Predecessors | Total slack | Free slack | Constraint | Resources | Work |
| --- | --- | --- | --- | --- | --- | --- | --- | --- | --- | --- | --- |
| 52 | 1.1.3.5 | **Desarrollo del Área de Proceso CM** | 4d | 2017-10-23 08:00 | 2017-10-26 18:00 |  |  |  |  |  | 28h |
| 53 | 1.1.3.5.1 | Elaborar Indice de Cambios de Intem de Configuración | 1d | 2017-10-23 09:00 | 2017-10-23 19:00 |  | 14.38d | 0d |  | freddy | 8h |
| 54 | 1.1.3.5.2 | Elaborar Registro de Intems de Configuración | 1d | 2017-10-24 09:00 | 2017-10-24 19:00 | 53 | 14.38d | 0d |  | freddy | 8h |
| 55 | 1.1.3.5.3 | Elaborar Formato de Solicitud de Acceso | 1d | 2017-10-25 09:00 | 2017-10-25 19:00 | 54 | 14.38d | 0d |  | freddy | 8h |
| 56 | 1.1.3.5.4 | Traspaso de Información | 0.5d | 2017-10-26 09:00 | 2017-10-26 13:00 | 55 | 14.38d |  |  | freddy | 4h |
| 57 | 1.1.4 | **Cierre** | 6d | 2017-10-23 08:00 | 2017-10-28 18:00 |  |  |  |  |  |  |
| 58 | 1.1.4.1 | **Cierre de Proyecto** | 5d | 2017-10-23 08:00 | 2017-10-27 18:00 |  |  |  |  |  |  |
| 59 | 1.1.4.1.1 | Revisión de Entregables de Proyecto | 2d | 2017-10-23 09:00 | 2017-10-24 19:00 |  | 15.88d |  |  |  |  |
| 60 | 1.1.4.1.2 | Traspaso de Información | 1d | 2017-10-23 09:00 | 2017-10-23 19:00 |  | 16.88d |  |  |  |  |
| 61 | 1.1.4.2 | **Relatorio del Proyecto** | 5d | 2017-10-23 09:00 | 2017-10-27 19:00 |  | 12.88d |  |  |  |  |
| 62 | 1.1.4.2.1 | Elaborar Relatorio del Proyecto | 1d | 2017-10-27 09:00 | 2017-10-27 19:00 |  | 12.88d |  | start no earlier than 2017-10-27 08:00 |  |  |
| 63 | 1.1.4.2.2 | Revisión y Ajustes de Relatorio por el equipo del Proyecto | 2d | 2017-10-23 09:00 | 2017-10-24 19:00 |  | 12.88d | 0d |  |  |  |
| 64 | 1.1.4.2.3 | Revisión de Relatorio | 2d | 2017-10-25 09:00 | 2017-10-26 19:00 | 63 | 12.88d | 0d |  |  |  |
| 65 | 1.1.4.2.4 | Traspaso de Información | 1d | 2017-10-27 09:00 | 2017-10-27 19:00 | 64 | 12.88d |  |  |  |  |
| 66 | 1.2 | **Proceso de Ingeniería** | 55d | 2017-09-04 08:00 | 2017-11-07 18:00 |  |  |  |  |  | 224h |
| 67 | 1.2.1 | **Software Staradmin** | 55d | 2017-09-04 08:00 | 2017-11-07 18:00 |  |  |  |  |  | 224h |
| 68 | 1.2.1.1 | **Requerimientos** | 6d | 2017-09-04 08:00 | 2017-09-09 18:00 |  |  |  |  |  | 40h |
| 69 | 1.2.1.1.1 | Desarrollar Plan de Proyecto | 1d | 2017-09-04 09:00 | 2017-09-04 19:00 |  | 54.88d | 0d | start no earlier than 2017-09-04 08:00 | david | 8h |
| 70 | 1.2.1.1.2 | Realizar Recopilación de Requerimientos | 2d | 2017-09-05 09:00 | 2017-09-06 19:00 | 69 | 54.88d | 0d | start no earlier than 2017-09-04 08:00 | david | 16h |
| 71 | 1.2.1.1.3 | Elaborar Lista Maestra de Requerimientos | 1d | 2017-09-07 09:00 | 2017-09-07 19:00 | 70 | 54.88d | 0d | start no earlier than 2017-09-04 08:00 | david | 8h |
| 72 | 1.2.1.1.4 | Traspaso de Información | 1d | 2017-09-08 09:00 | 2017-09-08 19:00 | 71 | 54.88d |  | start no earlier than 2017-09-04 08:00 | david | 8h |
| 73 | 1.2.1.2 | **Análisis** | 18d | 2017-09-11 08:00 | 2017-09-30 18:00 |  |  |  |  |  | 152h |
| 74 | 1.2.1.2.1 | Elaborar Documentos de Análisis | 5d | 2017-09-11 09:00 | 2017-09-15 19:00 |  | 48.88d |  | start no earlier than 2017-09-11 08:00 | keyla | 40h |
| 75 | 1.2.1.2.2 | **Casos de Uso** | 15d | 2017-09-11 08:00 | 2017-09-27 18:00 |  |  |  |  |  | 80h |
| 76 | 1.2.1.2.2.1 | **Casos de Uso Modulo 1** | 3d | 2017-09-11 08:00 | 2017-09-13 18:00 |  |  |  |  |  | 16h |
| 77 | 1.2.1.2.2.1.1 | Entender la Problemática Actual | 1d | 2017-09-11 09:00 | 2017-09-11 19:00 |  | 51.88d | 0d |  | david | 8h |
| 78 | 1.2.1.2.2.1.2 | Elaborar Casos de Uso | 0.5d | 2017-09-12 09:00 | 2017-09-12 13:00 | 77 | 51.88d | 0d |  | david | 4h |
| 79 | 1.2.1.2.2.1.3 | Actualizar Glosario de Términos | 0.5d | 2017-09-12 15:00 | 2017-09-12 19:00 | 78 | 51.88d |  |  | david | 4h |

| ID | WBS | Task | Duration | Start | Finish | Predecessors | Total slack | Free slack | Constraint | Resources | Work |
| --- | --- | --- | --- | --- | --- | --- | --- | --- | --- | --- | --- |
| 80 | 1.2.1.2.2.2 | **Caso de Uso Modulo 2** | 3d | 2017-09-13 08:00 | 2017-09-15 18:00 |  |  |  |  |  | 16h |
| 81 | 1.2.1.2.2.2.1 | Entender la Problemática Actual | 1d | 2017-09-13 09:00 | 2017-09-13 19:00 |  | 49.88d | 0d |  | david | 8h |
| 82 | 1.2.1.2.2.2.2 | Elaborar Casos de Uso | 0.5d | 2017-09-14 09:00 | 2017-09-14 13:00 | 81 | 49.88d | 0d |  | david | 4h |
| 83 | 1.2.1.2.2.2.3 | Actualizar Glosario de Términos | 0.5d | 2017-09-14 15:00 | 2017-09-14 19:00 | 82 | 49.88d |  |  | david | 4h |
| 84 | 1.2.1.2.2.3 | **Caso de Uso Modulo 3** | 4d | 2017-09-15 08:00 | 2017-09-19 18:00 |  |  |  |  |  | 16h |
| 85 | 1.2.1.2.2.3.1 | Entender la Problemática Actual | 1d | 2017-09-15 09:00 | 2017-09-15 19:00 |  | 48.88d |  | start no earlier than 2017-09-15 08:00 | david | 8h |
| 86 | 1.2.1.2.2.3.2 | Elaborar Casos de Uso | 0.5d | 2017-09-19 09:00 | 2017-09-19 13:00 |  | 46.38d |  | start no earlier than 2017-09-19 08:00 | david | 4h |
| 87 | 1.2.1.2.2.3.3 | Actualizar Glosario de Términos | 0.5d | 2017-09-19 09:00 | 2017-09-19 13:00 |  | 46.38d |  | start no earlier than 2017-09-19 08:00 | david | 4h |
| 88 | 1.2.1.2.2.4 | **Caso de Uso Modulo 4** | 2d | 2017-09-20 08:00 | 2017-09-21 18:00 |  |  |  |  |  | 16h |
| 89 | 1.2.1.2.2.4.1 | Entender la Problemática Actual | 1d? | 2017-09-20 09:00 | 2017-09-20 19:00 |  | 44.38d | 0d | start no earlier than 2017-09-20 08:00 | david | 8h |
| 90 | 1.2.1.2.2.4.2 | Elaborar Caso de Uso | 0.5d | 2017-09-21 09:00 | 2017-09-21 13:00 | 89 | 44.38d |  |  | david | 4h |
| 91 | 1.2.1.2.2.4.3 | Actualizar Glosario de Términos | 0.5d | 2017-09-21 09:00 | 2017-09-21 13:00 |  | 44.38d |  | start no earlier than 2017-09-21 08:00 | david | 4h |
| 92 | 1.2.1.2.2.5 | **Caso de Uso Modulo 5** | 3d | 2017-09-22 08:00 | 2017-09-25 18:00 |  |  |  |  |  | 16h |
| 93 | 1.2.1.2.2.5.1 | Entender la Problemática Actual | 1d | 2017-09-22 09:00 | 2017-09-22 19:00 |  | 42.88d |  | start no earlier than 2017-09-22 08:00 | david | 8h |
| 94 | 1.2.1.2.2.5.2 | Elabora Caso de Uso | 0.5d | 2017-09-25 09:00 | 2017-09-25 13:00 |  | 41.38d |  | start no earlier than 2017-09-25 08:00 | david | 4h |
| 95 | 1.2.1.2.2.5.3 | Actualizar Glosario de Términos | 0.5d | 2017-09-25 09:00 | 2017-09-25 13:00 |  | 41.38d |  | start no earlier than 2017-09-25 08:00 | david | 4h |
| 96 | 1.2.1.2.3 | Traspaso de Información | 4d | 2017-09-26 09:00 | 2017-09-29 19:00 |  | 36.88d |  | start no earlier than 2017-09-26 08:00 | david | 32h |
| 97 | 1.2.1.3 | **Diseño** | 10d | 2017-09-19 08:00 | 2017-09-29 18:00 |  |  |  |  |  | 32h |
| 98 | 1.2.1.3.1 | Elaborar Documento de Diseño | 4d | 2017-09-19 09:00 | 2017-09-22 19:00 |  | 42.88d |  |  | keyla | 32h |
| 99 | 1.2.1.3.2 | Traspaso de Información | 2d | 2017-09-25 09:00 | 2017-09-26 19:00 |  | 39.88d |  | start no earlier than 2017-09-25 08:00 |  |  |
| 100 | 1.2.1.4 | **Contrucción** | 18d | 2017-10-02 08:00 | 2017-10-21 18:00 |  |  |  |  |  |  |
| 101 | 1.2.1.4.1 | **Modulo 1** | 5d | 2017-10-17 08:00 | 2017-10-21 18:00 |  |  |  |  |  |  |
| 102 | 1.2.1.4.1.1 | **Contrucción Modulo Home** | 5d | 2017-10-17 08:00 | 2017-10-21 18:00 |  |  |  |  |  |  |
| 103 | 1.2.1.4.1.1.1 | Construción de la Vista Home | 4d | 2017-10-17 09:00 | 2017-10-20 19:00 |  | 18.88d |  | start no earlier than 2017-10-17 08:00 |  |  |

| ID | WBS | Task | Duration | Start | Finish | Predecessors | Total slack | Free slack | Constraint |
| --- | --- | --- | --- | --- | --- | --- | --- | --- | --- |
| 104 | 1.2.1.4.2 | **Modulo 2** | 5d | 2017-10-02 09:00 | 2017-10-06 19:00 |  |  |  |  |
| 105 | 1.2.1.4.2.1 | **Contrucción Modulo Venta** | 5d | 2017-10-02 09:00 | 2017-10-06 19:00 |  |  |  |  |
| 106 | 1.2.1.4.2.1.1 | Construcción Controlador Venta | 2d | 2017-10-02 09:00 | 2017-10-03 19:00 |  | 31.88d | 0d |  |
| 107 | 1.2.1.4.2.1.2 | Cosntrucción de la vista Venta | 1d | 2017-10-04 09:00 | 2017-10-04 19:00 | 106 | 31.88d | 0d |  |
| 108 | 1.2.1.4.2.1.3 | Cosntrucción del Modelo Venta | 1d | 2017-10-05 09:00 | 2017-10-05 19:00 | 107 | 31.88d |  |  |
| 109 | 1.2.1.4.3 | **Modulo 3** | 5d | 2017-10-09 08:00 | 2017-10-13 18:00 |  |  |  |  |
| 110 | 1.2.1.4.3.1 | **Contrucción Modulo Compra** | 5d | 2017-10-09 08:00 | 2017-10-13 18:00 |  |  |  |  |
| 111 | 1.2.1.4.3.1.1 | Construcción Controlador Compra | 1d | 2017-10-09 09:00 | 2017-10-09 19:00 |  | 26.88d | 0d | start no earlier than 2017-10-09 08:00 |
| 112 | 1.2.1.4.3.1.2 | Construcción de la Vista Compra | 1d | 2017-10-10 09:00 | 2017-10-10 19:00 | 111 | 26.88d | 0d |  |
| 113 | 1.2.1.4.3.1.3 | Construcción del Modelo Compra | 1d | 2017-10-11 09:00 | 2017-10-11 19:00 | 112 | 26.88d |  |  |
| 114 | 1.2.1.4.4 | **Modulo 4** | 5d | 2017-10-02 09:00 | 2017-10-06 19:00 |  |  |  |  |
| 115 | 1.2.1.4.4.1 | **Contrucción Modulo Productos** | 5d | 2017-10-02 09:00 | 2017-10-06 19:00 |  |  |  |  |
| 116 | 1.2.1.4.4.1.1 | Construcción Controlador Productos | 2d | 2017-10-02 09:00 | 2017-10-03 19:00 |  | 30.88d | 0d |  |
| 117 | 1.2.1.4.4.1.2 | Construcción de la Vista Productos | 2d | 2017-10-04 09:00 | 2017-10-05 19:00 | 116 | 30.88d | 0d |  |
| 118 | 1.2.1.4.4.1.3 | Consstrucción del Modelo Productos | 1d | 2017-10-06 09:00 | 2017-10-06 19:00 | 117 | 30.88d |  |  |
| 119 | 1.2.1.4.5 | **Modulo 5** | 5d | 2017-10-09 08:00 | 2017-10-13 18:00 |  |  |  |  |
| 120 | 1.2.1.4.5.1 | **Construcción Modulo Usuarios** | 5d | 2017-10-09 08:00 | 2017-10-13 18:00 |  |  |  |  |
| 121 | 1.2.1.4.5.1.1 | Construcción Controlador Usuarios | 2d | 2017-10-09 09:00 | 2017-10-10 19:00 |  | 25.88d | 0d |  |
| 122 | 1.2.1.4.5.1.2 | Construcción de la Vista Usuarios | 1d | 2017-10-11 09:00 | 2017-10-11 19:00 | 121 | 25.88d | 0d |  |
| 123 | 1.2.1.4.5.1.3 | Construción del Modulo Usuarios | 1d | 2017-10-12 09:00 | 2017-10-12 19:00 | 122 | 25.88d |  |  |
| 124 | 1.2.1.5 | **Pruebas** | 13d | 2017-10-23 08:00 | 2017-11-07 18:00 |  |  |  |  |
| 125 | 1.2.1.5.1 | **Pruebas Internas** | 7d | 2017-10-23 08:00 | 2017-10-30 18:00 |  |  |  |  |
| 126 | 1.2.1.5.1.1 | **Pruebas Modulo 1** | 2d | 2017-10-23 08:00 | 2017-10-24 18:00 |  |  |  |  |
| 127 | 1.2.1.5.1.1.1 | Elaborar Pruebas de Modulo | 1d | 2017-10-23 09:00 | 2017-10-23 19:00 |  | 16.38d | 0d | start no earlier than 2017-10-23 08:00 |
| 128 | 1.2.1.5.1.1.2 | Elaborar Informe de Prueba | 0.5d | 2017-10-24 09:00 | 2017-10-24 13:00 | 127 | 16.38d |  |  |
| 129 | 1.2.1.5.1.1.3 | Traspaso de Información | 0.5d | 2017-10-24 09:00 | 2017-10-24 13:00 |  | 16.38d |  | start no earlier than 2017-10-24 08:00 |

| ID | WBS | Task | Duration | Start | Finish | Predecessors | Total slack | Free slack | Constraint |
| --- | --- | --- | --- | --- | --- | --- | --- | --- | --- |
| 130 | 1.2.1.5.1.2 | **Pruebas de Modulo 2** | 2d | 2017-10-25 08:00 | 2017-10-26 18:00 |  |  |  |  |
| 131 | 1.2.1.5.1.2.1 | Elaborar Pruebas de Modulo | 1d | 2017-10-25 09:00 | 2017-10-25 19:00 |  | 14.38d | 0d |  |
| 132 | 1.2.1.5.1.2.2 | Elaborar Informe de Prueba | 0.5d | 2017-10-26 09:00 | 2017-10-26 13:00 | 131 | 14.38d |  |  |
| 133 | 1.2.1.5.1.2.3 | Traspaso de Información | 0.5d | 2017-10-26 09:00 | 2017-10-26 13:00 |  | 14.38d |  | start no earlier than 2017-10-26 08:00 |
| 134 | 1.2.1.5.1.3 | **Pruebas de Modulo 3** | 2d | 2017-10-27 08:00 | 2017-10-28 18:00 |  |  |  |  |
| 135 | 1.2.1.5.1.3.1 | Elaborar Pruebas de Modulo | 1d | 2017-10-27 09:00 | 2017-10-27 19:00 |  | 12.88d |  |  |
| 136 | 1.2.1.5.1.3.2 | Elaborar Informe de Prueba | 0.5d | 2017-10-30 09:00 | 2017-10-30 13:00 |  | 11.38d |  | start no earlier than 2017-10-30 08:00 |
| 137 | 1.2.1.5.1.3.3 | Traspaso de Información | 0.5d | 2017-10-30 09:00 | 2017-10-30 13:00 |  | 11.38d |  | start no earlier than 2017-10-30 08:00 |
| 138 | 1.2.1.5.1.4 | **Pruebas de Modulo 4** | 2d | 2017-10-25 08:00 | 2017-10-26 18:00 |  |  |  |  |
| 139 | 1.2.1.5.1.4.1 | Elaborar Pruebas de Modulo | 1d | 2017-10-25 09:00 | 2017-10-25 19:00 |  | 14.38d | 0d | start no earlier than 2017-10-25 08:00 |
| 140 | 1.2.1.5.1.4.2 | Elaborar Informe de Prueba | 0.5d | 2017-10-26 09:00 | 2017-10-26 13:00 | 139 | 14.38d |  |  |
| 141 | 1.2.1.5.1.4.3 | Traspaso de Información | 0.5d | 2017-10-26 09:00 | 2017-10-26 13:00 |  | 14.38d |  | start no earlier than 2017-10-26 08:00 |
| 142 | 1.2.1.5.1.5 | **Pruebas de Modulo 5** | 2d | 2017-10-27 08:00 | 2017-10-28 18:00 |  |  |  |  |
| 143 | 1.2.1.5.1.5.1 | Elaborar Pruebas de Modulo | 1d | 2017-10-27 09:00 | 2017-10-27 19:00 |  | 12.88d |  |  |
| 144 | 1.2.1.5.1.5.2 | Elaborar Informe de Prueba | 0.5d | 2017-10-30 09:00 | 2017-10-30 13:00 |  | 11.38d |  | start no earlier than 2017-10-30 08:00 |
| 145 | 1.2.1.5.1.5.3 | Traspaso de Información | 0.5d | 2017-10-30 09:00 | 2017-10-30 13:00 |  | 11.38d |  | start no earlier than 2017-10-30 08:00 |
| 146 | 1.2.1.5.2 | **Pruebas Externas** | 3d | 2017-10-31 08:00 | 2017-11-03 18:00 |  |  |  |  |
| 147 | 1.2.1.5.2.1 | **Pruebas de Modulo 1, 2 y 3** | 2d | 2017-10-31 09:00 | 2017-11-02 19:00 |  |  |  |  |
| 148 | 1.2.1.5.2.1.1 | Elaborar Pruebas de Modulos | 1d | 2017-10-31 09:00 | 2017-10-31 19:00 |  | 8.88d | 0d | start no earlier than 2017-10-31 08:00 |
| 149 | 1.2.1.5.2.1.2 | Elaborar Informe de Pruebas | 0.5d | 2017-11-02 09:00 | 2017-11-02 13:00 | 148 | 8.88d | 0d |  |
| 150 | 1.2.1.5.2.1.3 | Traspaso de Información | 0.5d | 2017-11-02 15:00 | 2017-11-02 19:00 | 149 | 8.88d |  |  |
| 151 | 1.2.1.5.2.2 | **Pruebas de Modulo 4 y 5** | 2d | 2017-10-31 09:00 | 2017-11-02 19:00 |  |  |  |  |
| 152 | 1.2.1.5.2.2.1 | Elaborar Pruebas de Modulos | 1d | 2017-10-31 09:00 | 2017-10-31 19:00 |  | 8.88d | 0d |  |
| 153 | 1.2.1.5.2.2.2 | Elaborar Informe de Pruebas | 0.5d | 2017-11-02 09:00 | 2017-11-02 13:00 | 152 | 8.88d | 0d |  |
| 154 | 1.2.1.5.2.2.3 | Traspaso de Información | 0.5d | 2017-11-02 15:00 | 2017-11-02 19:00 | 153 | 8.88d |  |  |

| ID | WBS | Task | Duration | Start | Finish | Complete | Remaining | Actual start | Actual finish | Total slack | Constraint | Resources | Work | Actual work |
| --- | --- | --- | --- | --- | --- | --- | --- | --- | --- | --- | --- | --- | --- | --- |
| 155 | 1.2.1.6 | **Implementación** | 10d | 2017-09-04 09:00 | 2017-09-14 19:00 |  |  |  |  |  |  |  |  |  |
| 156 | 1.2.1.6.1 | **Guia de Usuario** | 1d | 2017-09-04 09:00 | 2017-09-04 19:00 |  |  |  |  | 58.88d |  |  |  |  |
| 157 | 1.2.1.6.1.1 | Elaborar Guia de Instalacion de Sistema | 1d | 2017-09-04 09:00 | 2017-09-04 19:00 |  |  |  |  | 58.88d |  |  |  |  |
| 158 | 1.2.1.6.1.2 | Elaborar Manual de Usuario con todos los módulos actualizados | 1d | 2017-09-04 09:00 | 2017-09-04 19:00 |  |  |  |  | 58.88d |  |  |  |  |
| 159 | 1.2.1.6.1.3 | Traspaso de Información | 1d | 2017-09-04 09:00 | 2017-09-04 19:00 |  |  |  |  | 58.88d |  |  |  |  |
| 160 | 1.3 | **Inducción de Personal** | 3d | 2017-08-28 09:00 | 2017-08-30 19:00 |  |  |  |  | 62.88d |  |  |  |  |
| 161 | 1.3.1 | Establecer Personal para Inducción | 1d | 2017-08-28 09:00 | 2017-08-28 19:00 |  |  |  |  | 64.88d |  |  |  |  |
| 162 | 1.3.2 | Realizar Inducción al Personal | 3d | 2017-08-28 09:00 | 2017-08-30 19:00 |  |  |  |  | 62.88d |  |  |  |  |
| 163 | 1.3.3 | Verificar Proceso de Inducción | 1d | 2017-08-28 09:00 | 2017-08-28 19:00 |  |  |  |  | 64.88d |  |  |  |  |
| 164 | 1.3.4 | Elaborar Certificado de Proceso de Inducción de Personal | 1d | 2017-08-28 09:00 | 2017-08-28 19:00 |  |  |  |  | 64.88d |  |  |  |  |
| 165 | 1.3.5 | Traspaso de Información | 1d | 2017-08-28 09:00 | 2017-08-28 19:00 |  |  |  |  | 64.88d |  |  |  |  |
| 166 | 1.3.6 | Pasar de Área de Desarrollo a Personal Capacitado | 1d | 2017-08-28 09:00 | 2017-08-28 19:00 |  |  |  |  | 64.88d |  |  |  |  |
| 167 | 1.4 | **Proceso de Aseguramiento de la Calidad del Proyecto** | 57.88d | 2017-09-04 08:00 A | 2017-11-10 18:00 | 15% | 49.11d |  |  | 2d |  |  |  |  |
| 168 | 1.4.1 | **Primera Revisión** | 11d | 2017-09-04 08:00 | 2017-09-15 18:00 | 100% |  | 2017-09-18 09:00 | 2017-09-22 19:00 |  |  |  |  |  |
| 169 | 1.4.1.1 | Correción de puntos faltantes | 4d | 2017-09-19 09:00 A | 2017-09-22 19:00 A | 100% |  |  |  |  | start no earlier than 2017-09-19 08:00 |  |  |  |
| 170 | 1.4.1.2 | Traspaso de Información | 1d | 2017-09-18 09:00 A | 2017-09-18 19:00 A | 100% |  |  |  |  | start no earlier than 2017-09-18 08:00 |  |  |  |
| 171 | 1.4.2 | **Segunda Revisión** | 20d | 2017-09-25 08:00 | 2017-10-17 18:00 |  |  |  |  |  |  |  |  |  |
| 172 | 1.4.2.1 | Correción de puntos faltantes | 13d | 2017-09-25 09:00 | 2017-10-09 19:00 |  |  |  |  | 28.88d |  |  |  |  |
| 173 | 1.4.2.2 | Traspaso de Información | 1d | 2017-09-25 09:00 | 2017-09-25 19:00 |  |  |  |  | 40.88d |  |  |  |  |
| 174 | 1.4.3 | **Tercera Revisión** | 16d | 2017-10-23 08:00 | 2017-11-10 18:00 |  |  |  |  |  |  |  |  |  |
| 175 | 1.4.3.1 | Correción de puntos faltantes | 13d | 2017-10-23 09:00 | 2017-11-07 19:00 |  |  |  |  | 4.88d |  |  |  |  |
| 176 | 1.4.3.2 | Traspaso de Información | 1d | 2017-10-23 09:00 | 2017-10-23 19:00 |  |  |  |  | 16.88d |  |  |  |  |
| 177 | 1.5 | **Reuniones Internas XX** | 59.88d? | 2017-09-02 09:00 A | 2017-11-11 18:00 | 64% | 21.77d? |  |  | 1d |  |  | 312h | 184h |
| 178 | 1.5.1 | **Reunión Semanal 1** | 1d | 2017-09-09 08:00 | 2017-09-09 18:00 A | 100% |  | 2017-09-02 09:00 |  |  |  | samuel; david; keyla | 24h | 24h |
| 179 | 1.5.1.1 | Elaborar Acta de Reunión | 0.5d | 2017-09-02 09:00 A | 2017-09-02 13:00 A | 100% |  |  |  |  | start no earlier than 2017-09-02 08:00 |  |  |  |
| 180 | 1.5.1.2 | Traspaso de Información | 0.5d | 2017-09-09 09:00 A | 2017-09-09 13:00 A | 100% |  |  |  |  |  |  |  |  |

| ID | WBS | Task | Duration | Start | Finish | Complete | Actual start | Actual finish | Total slack | Constraint | Resources | Work | Actual work |
| --- | --- | --- | --- | --- | --- | --- | --- | --- | --- | --- | --- | --- | --- |
| 181 | 1.5.2 | **Reunión Semanal 2** | 1d | 2017-09-16 08:00 | 2017-09-16 18:00 A | 100% | 2017-09-09 09:00 |  |  |  | david; freddy; keyla; samuel | 32h | 32h |
| 182 | 1.5.2.1 | Elaborar Acta de Reunión | 0.5d | 2017-09-09 09:00 A | 2017-09-09 13:00 A | 100% |  |  |  | start no earlier than 2017-09-09 08:00 |  |  |  |
| 183 | 1.5.2.2 | Traspaso de Información | 0.5d | 2017-09-09 09:00 A | 2017-09-09 13:00 A | 100% |  |  |  | start no earlier than 2017-09-09 08:00 |  |  |  |
| 184 | 1.5.3 | **Reunión Semanal 3** | 1d | 2017-09-23 08:00 | 2017-09-23 18:00 A | 100% | 2017-09-16 09:00 |  |  |  | david; freddy; keyla; samuel | 32h | 32h |
| 185 | 1.5.3.1 | Elaborar Acta de Reunión | 0.5d | 2017-09-16 09:00 A | 2017-09-16 13:00 A | 100% |  |  |  | start no earlier than 2017-09-16 08:00 |  |  |  |
| 186 | 1.5.3.2 | Traspaso de Información | 0.5d | 2017-09-16 09:00 A | 2017-09-16 13:00 A | 100% |  |  |  | start no earlier than 2017-09-16 08:00 |  |  |  |
| 187 | 1.5.4 | **Reunión Semanal 4** | 1d | 2017-09-30 08:00 A | 2017-09-30 18:00 A | 100% |  |  |  |  | david; freddy; keyla; samuel | 32h | 32h |
| 188 | 1.5.4.1 | Elaborar Acta de Reunión | 0.5d | 2017-09-30 09:00 A | 2017-09-30 13:00 A | 100% |  |  |  |  |  |  |  |
| 189 | 1.5.4.2 | Traspaso de Información | 0.5d | 2017-09-30 09:00 A | 2017-09-30 13:00 A | 100% |  |  |  |  |  |  |  |
| 190 | 1.5.5 | **Reunión Semanal 5** | 1d | 2017-10-07 08:00 A | 2017-10-07 18:00 | 100% |  | 2017-10-07 19:00 |  |  | david; freddy; keyla; samuel | 32h | 32h |
| 191 | 1.5.5.1 | Elaborar Acta de Reunión | 1d | 2017-10-07 09:00 A | 2017-10-07 19:00 A | 100% |  |  |  |  |  |  |  |
| 192 | 1.5.5.2 | Traspaso de Información | 1d | 2017-10-07 09:00 A | 2017-10-07 19:00 A | 100% |  |  |  |  |  |  |  |
| 193 | 1.5.6 | **Reunión Semanal 6** | 1d? | 2017-10-14 08:00 A | 2017-10-14 18:00 A | 100% |  |  |  |  | david; freddy; keyla; samuel | 32h | 32h |
| 194 | 1.5.6.1 | Elaborar Acta de Reunión | 0.5d | 2017-10-14 09:00 A | 2017-10-14 13:00 A | 100% |  |  |  |  |  |  |  |
| 195 | 1.5.6.2 | Traspaso de Información | 0.5d | 2017-10-14 09:00 A | 2017-10-14 13:00 A | 100% |  |  |  |  |  |  |  |
| 196 | 1.5.7 | **Reunión Semanal 7** | 1d | 2017-10-21 08:00 | 2017-10-21 18:00 |  |  |  |  |  | david; freddy; keyla; samuel | 32h |  |
| 197 | 1.5.7.1 | Elaborar Acta de Reunión | 0.5d | 2017-10-21 09:00 | 2017-10-21 13:00 |  |  |  | 18.38d |  |  |  |  |
| 198 | 1.5.7.2 | Traspaso de Información | 0.5d | 2017-10-21 09:00 | 2017-10-21 13:00 |  |  |  | 18.38d |  |  |  |  |
| 199 | 1.5.8 | **Reaunión Semanal 8** | 1d | 2017-10-28 08:00 | 2017-10-28 18:00 |  |  |  |  |  | david; freddy; keyla; samuel | 32h |  |
| 200 | 1.5.8.1 | Elaborar Acta de Reaunión | 0.5d | 2017-10-28 09:00 | 2017-10-28 13:00 |  |  |  | 12.38d |  |  |  |  |
| 201 | 1.5.8.2 | Traspaso de Información | 0.5d | 2017-10-28 09:00 | 2017-10-28 13:00 |  |  |  | 12.38d |  |  |  |  |
| 202 | 1.5.9 | **Reunión Semanal 9** | 1d | 2017-11-04 08:00 | 2017-11-04 18:00 |  |  |  |  |  | david; freddy; keyla; samuel | 32h |  |
| 203 | 1.5.9.1 | Elaborar Acta de Reunión | 0.5d | 2017-11-04 09:00 | 2017-11-04 13:00 |  |  |  | 7.38d |  |  |  |  |
| 204 | 1.5.9.2 | Traspaso de Información | 0.5d | 2017-11-04 09:00 | 2017-11-04 13:00 |  |  |  | 7.38d |  |  |  |  |

| ID | WBS | Task | Duration | Start | Finish | Complete | Remaining | Actual start | Actual finish | Total slack | Resources | Work | Actual work |
| --- | --- | --- | --- | --- | --- | --- | --- | --- | --- | --- | --- | --- | --- |
| 205 | 1.5.10 | **Reunión Final** | 1d | 2017-11-11 08:00 | 2017-11-11 18:00 |  |  |  |  |  | david; freddy; keyla; samuel | 32h |  |
| 206 | 1.5.10.1 | Elaborar Acta de Reunión | 0.5d | 2017-11-11 09:00 | 2017-11-11 13:00 |  |  |  |  | 1.38d |  |  |  |
| 207 | 1.5.10.2 | Traspaso de Información | 0.5d | 2017-11-11 09:00 | 2017-11-11 13:00 |  |  |  |  | 1.38d |  |  |  |
| 208 | 1.6 | **Reunión Externa XPERTSOLUTIONS-CLIENTE** | 48d | 2017-09-18 08:00 | 2017-11-13 18:00 | 27% | 35.08d | 2017-09-18 09:00 |  |  |  | 73.6h | 9.6h |
| 209 | 1.6.1 | **Primera Presentación del Proyecto** | 1d | 2017-09-18 09:00 A | 2017-09-18 19:00 | 100% |  |  | 2017-09-18 11:24 |  |  | 9.6h | 9.6h |
| 210 | 1.6.1.1 | Reunión Externa con LIMBO E.I.R.L | 0.3d | 2017-09-18 09:00 A | 2017-09-18 11:24 A | 100% |  |  |  |  | david; freddy; keyla; samuel | 9.6h | 9.6h |
| 211 | 1.6.1.2 | Acta de reunión de acuerdos tomados | 0.3d | 2017-09-18 09:00 A | 2017-09-18 11:24 A | 100% |  |  |  |  |  |  |  |
| 212 | 1.6.1.3 | Traspaso de Información | 0.1d | 2017-09-18 09:00 A | 2017-09-18 09:48 A | 100% |  |  |  |  |  |  |  |
| 213 | 1.6.2 | **Segúnda Presentación del Proyecto** | 1d | 2017-10-18 08:00 | 2017-10-18 18:00 |  |  |  |  |  | david; freddy; keyla; samuel | 32h |  |
| 214 | 1.6.2.1 | Reunión Externa con LIMBO E.I.R.L | 1d | 2017-10-18 09:00 | 2017-10-18 19:00 |  |  |  |  | 20.88d |  |  |  |
| 215 | 1.6.2.2 | Acta de reunión de acuerdos tomados | 0.1d | 2017-10-18 09:00 | 2017-10-18 09:48 |  |  |  |  | 21.77d |  |  |  |
| 216 | 1.6.2.3 | Traspaso de Información | 0.3d | 2017-10-18 09:00 | 2017-10-18 11:24 |  |  |  |  | 21.57d |  |  |  |
| 217 | 1.6.3 | **Tercera Presentación del Proyecto** | 1d | 2017-11-13 08:00 | 2017-11-13 18:00 |  |  |  |  |  | david; freddy; keyla; samuel | 32h |  |
| 218 | 1.6.3.1 | Reunión Externa con LIMBO E.I.R.L | 0.3d | 2017-11-13 09:00 | 2017-11-13 11:24 |  |  |  |  | 0.57d |  |  |  |
| 219 | 1.6.3.2 | Acta de reunión de acuerdos tomados | 0.1d | 2017-11-13 09:00 | 2017-11-13 09:48 |  |  |  |  | 0.78d |  |  |  |
| 220 | 1.6.3.3 | Traspaso de Información | 0.1d | 2017-11-13 09:00 | 2017-11-13 09:48 |  |  |  |  | 0.78d |  |  |  |
