# Cronograma_Proy

Schedule from MS Project, 2017-08-28 to 2017-11-13, A marks actual dates.

## Calendars

- Caldendario UTP: Mon-Sat 09:00-13:00, 15:00-19:00; Sun off. Exceptions (off unless hours are given): 2017-10-08 (Combate de Angamos), 2017-11-01 (Todos los Santos).

## Resources

| Resource |
| --- |
| keyla |
| david |
| samuel |
| freddy |
| f |

## Schedule

| ID | WBS | Task | Type | Duration | Start | Finish | Predecessors | Complete | Remaining | Actual start | Actual finish | Constraint | Resources | Work | Actual work |
| --- | --- | --- | --- | --- | --- | --- | --- | --- | --- | --- | --- | --- | --- | --- | --- |
| 1 | 1 | **Proyecto Staradmin** |  | 66d | 2017-08-28 08:00 | 2017-11-13 18:00 |  | 99% | 0.17d | 2017-08-28 09:00 |  |  |  | 1558.4h | 1526.4h |
| 2 | 1.1 | **Proceso de Gestión** |  | 54d | 2017-08-28 09:00 A | 2017-10-28 19:00 |  | 100% |  |  | 2017-11-08 19:00 |  |  | 656h | 656h |
| 3 | 1.1.1 | **Inicio** |  | 5d | 2017-08-28 09:00 A | 2017-09-01 19:00 A |  | 100% |  |  |  |  |  | 160h | 160h |
| 4 | 1.1.1.1 | Revisión de la Metodología del Trabajo | manual | 5d | 2017-08-28 09:00 A | 2017-09-01 19:00 A |  | 100% |  |  |  |  | freddy; keyla; samuel; david | 160h | 160h |
| 5 | 1.1.2 | **Planificación** |  | 9d | 2017-09-04 08:00 | 2017-09-13 18:00 |  | 100% |  | 2017-09-04 09:00 | 2017-09-12 19:00 |  |  | 152h | 152h |
| 6 | 1.1.2.1 | **Plan del Proyecto** |  | 8d | 2017-09-04 09:00 A | 2017-09-12 19:00 A |  | 100% |  |  |  |  |  | 152h | 152h |
| 7 | 1.1.2.1.1 | **Elaboración del Plan del Proyecto** |  | 6d | 2017-09-04 09:00 A | 2017-09-09 19:00 A |  | 100% |  |  |  |  |  | 88h | 88h |
| 8 | 1.1.2.1.1.1 | Definir nombre del proyecto |  | 0.5d | 2017-09-04 09:00 A | 2017-09-04 13:00 A |  | 100% |  |  |  | start no earlier than 2017-09-04 08:00 | freddy | 4h | 4h |
| 9 | 1.1.2.1.1.2 | Definir objetivos del proyecto |  | 0.5d | 2017-09-04 15:00 A | 2017-09-04 19:00 A | 8 | 100% |  |  |  |  | freddy | 4h | 4h |
| 10 | 1.1.2.1.1.3 | Elaboración del cronograma detallado |  | 5d | 2017-09-04 09:00 A | 2017-09-08 19:00 A |  | 100% |  |  |  |  | samuel | 40h | 40h |
| 11 | 1.1.2.1.1.4 | Necesidades del Proyecto |  | 1d | 2017-09-05 09:00 A | 2017-09-05 19:00 A | 9 | 100% |  |  |  |  | freddy | 8h | 8h |
| 12 | 1.1.2.1.1.5 | Identificación de Riesgos del Proyecto |  | 1d | 2017-09-06 09:00 A | 2017-09-06 19:00 A | 11 | 100% |  |  |  |  | freddy | 8h | 8h |
| 13 | 1.1.2.1.1.6 | Elaborar Documentos de Riesgo del Proyecto |  | 1d | 2017-09-07 09:00 A | 2017-09-07 19:00 A | 12 | 100% |  |  |  |  | freddy | 8h | 8h |
| 14 | 1.1.2.1.1.7 | Elaborar Documentos del Plan del Proyecto |  | 1d | 2017-09-08 09:00 A | 2017-09-08 19:00 A | 13 | 100% |  |  |  |  | freddy | 8h | 8h |
| 15 | 1.1.2.1.1.8 | Traspaso de Información |  | 1d | 2017-09-09 09:00 A | 2017-09-09 19:00 A | 14 | 100% |  |  |  |  | freddy | 8h | 8h |
| 16 | 1.1.2.1.2 | **Revisión Interna del Plan del Proyecto** |  | 2d | 2017-09-11 09:00 A | 2017-09-12 19:00 A |  | 100% |  |  |  |  |  | 24h | 24h |
| 17 | 1.1.2.1.2.1 | Revisión del Plan del Proyecto por el equipo del Proyecto |  | 1d | 2017-09-11 09:00 A | 2017-09-11 19:00 A |  | 100% |  |  |  | start no earlier than 2017-09-11 08:00 |  |  |  |
| 18 | 1.1.2.1.2.2 | Ajustes al Plan del Proyecto |  | 1d | 2017-09-11 09:00 A | 2017-09-11 19:00 A |  | 100% |  |  |  | start no earlier than 2017-09-11 08:00 | freddy | 8h | 8h |
| 19 | 1.1.2.1.2.3 | Elaborar acta de REVISIÓN INTERNA DEL PLAN DEL PROYECTO |  | 1d | 2017-09-11 09:00 A | 2017-09-11 19:00 A |  | 100% |  |  |  | start no earlier than 2017-09-11 08:00 | samuel | 8h | 8h |
| 20 | 1.1.2.1.2.4 | Traspaso de Información |  | 1d | 2017-09-12 09:00 A | 2017-09-12 19:00 A | 19 | 100% |  |  |  |  | samuel | 8h | 8h |
| 21 | 1.1.2.1.3 | **Gestión de la Configuración** |  | 5d | 2017-09-04 09:00 A | 2017-09-08 19:00 A |  | 100% |  |  |  |  |  | 40h | 40h |
| 22 | 1.1.2.1.3.1 | Establecer Repositorio de Datos |  | 2d | 2017-09-04 09:00 A | 2017-09-05 19:00 A |  | 100% |  |  |  |  | keyla | 16h | 16h |
| 23 | 1.1.2.1.3.2 | Asignar Gestión de Configuración |  | 2d | 2017-09-06 09:00 A | 2017-09-07 19:00 A | 22 | 100% |  |  |  |  | keyla | 16h | 16h |
| 24 | 1.1.2.1.3.3 | Elaborar Solicitud de Accesos |  | 1d | 2017-09-08 09:00 A | 2017-09-08 19:00 A | 23 | 100% |  |  |  |  | keyla | 8h | 8h |

| ID | WBS | Task | Duration | Start | Finish | Predecessors | Complete | Actual start | Actual finish | Constraint | Resources | Work | Actual work |
| --- | --- | --- | --- | --- | --- | --- | --- | --- | --- | --- | --- | --- | --- |
| 25 | 1.1.3 | **Asignación, Ejecución, Seguimiento y Control** | 39d | 2017-09-13 08:00 | 2017-10-27 18:00 |  | 100% | 2017-09-13 09:00 | 2017-10-27 19:00 |  |  | 296h | 296h |
| 26 | 1.1.3.1 | **Desarrollo del Área de Procesos PP-PMC** | 3d | 2017-09-13 09:00 A | 2017-09-15 19:00 A |  | 100% |  |  |  |  | 48h | 48h |
| 27 | 1.1.3.1.1 | Elaborar Plantilla de Registro Riesgos | 1d | 2017-09-13 09:00 A | 2017-09-13 19:00 A |  | 100% |  |  | start no earlier than 2017-09-13 08:00 | samuel | 8h | 8h |
| 28 | 1.1.3.1.2 | Elaborar Plantilla de Informe de Avances Mensual | 1d | 2017-09-14 09:00 A | 2017-09-14 19:00 A | 27 | 100% |  |  |  | samuel | 8h | 8h |
| 29 | 1.1.3.1.3 | Elaborar Plantillas de Actas de Reunión Interna Semanal | 1d | 2017-09-13 09:00 A | 2017-09-13 19:00 A |  | 100% |  |  | start no earlier than 2017-09-13 08:00 | freddy | 8h | 8h |
| 30 | 1.1.3.1.4 | Elaborar Formato de Aceptación de Entregables | 1d | 2017-09-14 09:00 A | 2017-09-14 19:00 A | 29 | 100% |  |  | start no earlier than 2017-09-14 08:00 | freddy | 8h | 8h |
| 31 | 1.1.3.1.5 | Elaborar Documento de Proceso de Gestión de Proyectos | 1d | 2017-09-15 09:00 A | 2017-09-15 19:00 A | 30 | 100% |  |  | start no earlier than 2017-09-15 08:00 | samuel | 8h | 8h |
| 32 | 1.1.3.1.6 | Traspaso de Información | 1d | 2017-09-15 09:00 A | 2017-09-15 19:00 A | 27 | 100% |  |  | start no earlier than 2017-09-15 08:00 | freddy | 8h | 8h |
| 33 | 1.1.3.2 | **Desarrollo del Área de Procesos REQM** | 8d | 2017-09-25 08:00 | 2017-10-03 18:00 A |  | 100% | 2017-09-25 09:00 |  |  |  | 48h | 48h |
| 34 | 1.1.3.2.1 | Elaborar Formato Acta Reunión Cliente | 1d | 2017-09-25 09:00 A | 2017-09-25 19:00 A |  | 100% |  |  | start no earlier than 2017-09-25 08:00 | samuel | 8h | 8h |
| 35 | 1.1.3.2.2 | Elaborar Formato de Matriz de Trazabilidad de Requerimientos | 1d | 2017-09-26 09:00 A | 2017-09-26 19:00 A | 34 | 100% |  |  |  | samuel | 8h | 8h |
| 36 | 1.1.3.2.3 | Elaborar Solicitud de Cambios de Requerimentos | 1d | 2017-09-27 09:00 A | 2017-09-27 19:00 A | 35 | 100% |  |  |  | samuel | 8h | 8h |
| 37 | 1.1.3.2.4 | Elaborar Registro de Cambios de Requerimientos | 1d | 2017-09-28 09:00 A | 2017-09-28 19:00 A | 36 | 100% |  |  |  | samuel | 8h | 8h |
| 38 | 1.1.3.2.5 | Elaborar Lista Maestra de Requerimientos | 1d | 2017-09-25 09:00 A | 2017-09-25 19:00 A |  | 100% |  |  |  |  |  |  |
| 39 | 1.1.3.2.6 | Proceso Gestión de Requerimientos | 1d | 2017-09-25 09:00 A | 2017-09-25 19:00 A |  | 100% |  |  | start no earlier than 2017-09-25 08:00 | freddy | 8h | 8h |
| 40 | 1.1.3.2.7 | Traspaso de Información | 1d | 2017-10-02 18:00 A | 2017-10-03 18:00 A | 39 | 100% |  |  | finish no earlier than 2017-10-03 18:00 | freddy | 8h | 8h |
| 41 | 1.1.3.3 | **Desarrollo del Proceso MA** | 14d | 2017-10-02 08:00 | 2017-10-17 18:00 |  | 100% | 2017-10-02 09:00 | 2017-10-17 13:00 |  |  | 60h | 60h |
| 42 | 1.1.3.3.1 | Elaborar Tablero de Control de Métricas del Proyecto | 9d | 2017-10-02 09:00 A | 2017-10-11 19:00 A |  | 100% |  |  | start no earlier than 2017-10-02 08:00 |  |  |  |
| 43 | 1.1.3.3.2 | Elaborar Metrica de Exposicion al Riesgo | 1d | 2017-10-12 09:00 A | 2017-10-12 19:00 A | 42 | 100% |  |  |  | freddy | 8h | 8h |
| 44 | 1.1.3.3.3 | Elaborar Metrica de Volatilidad de Requerimientos | 1d | 2017-10-12 09:00 A | 2017-10-12 19:00 A | 42 | 100% |  |  |  | david | 8h | 8h |
| 45 | 1.1.3.3.4 | Elaborar Ficha Métrica de Número de No Conformidades de Calidad-Producto | 4d | 2017-10-12 09:00 A | 2017-10-16 19:00 A | 42 | 100% |  |  | start no earlier than 2017-10-12 08:00 | samuel | 32h | 32h |
| 46 | 1.1.3.3.5 | Ficha de Métricas de Índice de Cambios en Ítems de Configuración | 1d | 2017-10-12 09:00 A | 2017-10-12 19:00 A |  | 100% |  |  | start no earlier than 2017-10-12 08:00 | samuel | 8h | 8h |
| 47 | 1.1.3.3.6 | Traspaso de Información | 0.5d | 2017-10-17 09:00 A | 2017-10-17 13:00 A | 45 | 100% |  |  | start no earlier than 2017-10-17 08:00 | samuel | 4h | 4h |
| 48 | 1.1.3.4 | **Desarrollo del Proceso PPQA** | 8d | 2017-10-09 08:00 | 2017-10-17 18:00 A |  | 100% | 2017-10-09 09:00 |  |  |  | 44h | 44h |
| 49 | 1.1.3.4.1 | Elaborar Herramientas de Gestión de Calidad-Productos | 2d | 2017-10-09 09:00 A | 2017-10-10 19:00 A |  | 100% |  |  | start no earlier than 2017-10-09 08:00 | david | 16h | 16h |
| 50 | 1.1.3.4.2 | Elaborar Cheklist de Proyecto | 2d | 2017-10-09 09:00 A | 2017-10-10 19:00 A |  | 100% |  |  |  | freddy | 16h | 16h |
| 51 | 1.1.3.4.3 | Elaborar Proceso de Aseguramiento de la Calidad-Producto | 1d | 2017-10-16 09:00 A | 2017-10-16 19:00 A |  | 100% |  |  | start no earlier than 2017-10-16 08:00 | keyla | 8h | 8h |
| 52 | 1.1.3.4.4 | Traspaso de Información | 0.5d | 2017-10-17 12:00 A | 2017-10-17 18:00 A | 51 | 100% |  |  | finish no earlier than 2017-10-17 18:00 | freddy | 4h | 4h |

| ID | WBS | Task | Duration | Start | Finish | Predecessors | Complete | Actual start | Actual finish | Constraint | Resources | Work | Actual work |
| --- | --- | --- | --- | --- | --- | --- | --- | --- | --- | --- | --- | --- | --- |
| 53 | 1.1.3.5 | **Desarrollo del Área de Proceso CM** | 5d | 2017-10-23 08:00 | 2017-10-27 18:00 |  | 100% | 2017-10-23 09:00 | 2017-10-27 19:00 |  |  | 96h | 96h |
| 54 | 1.1.3.5.1 | Proceso de Gestión de la Configuración | 5d | 2017-10-23 09:00 A | 2017-10-27 19:00 A |  | 100% |  |  |  | david | 40h | 40h |
| 55 | 1.1.3.5.2 | Elaborar Registro de Intems de Configuración | 5d | 2017-10-23 09:00 A | 2017-10-27 19:00 A |  | 100% |  |  | start no earlier than 2017-10-23 08:00 | keyla | 40h | 40h |
| 56 | 1.1.3.5.3 | Elaborar Formato de Solicitud de Acceso | 1d | 2017-10-23 09:00 A | 2017-10-23 19:00 A |  | 100% |  |  |  | samuel | 8h | 8h |
| 57 | 1.1.3.5.4 | Traspaso de Información | 1d | 2017-10-24 09:00 A | 2017-10-24 19:00 A | 56 | 100% |  |  |  | freddy | 8h | 8h |
| 58 | 1.1.4 | **Cierre** | 5d | 2017-11-06 08:00 | 2017-11-10 18:00 |  | 100% | 2017-11-06 09:00 | 2017-11-08 19:00 |  |  | 48h | 48h |
| 59 | 1.1.4.1 | **Cierre de Proyecto** | 5d | 2017-11-06 08:00 | 2017-11-10 18:00 |  | 100% | 2017-11-06 09:00 | 2017-11-08 19:00 |  |  | 48h | 48h |
| 60 | 1.1.4.1.1 | Revisión de Entregables de Proyecto | 3d | 2017-11-06 09:00 A | 2017-11-08 19:00 A |  | 100% |  |  |  | keyla | 24h | 24h |
| 61 | 1.1.4.1.2 | Elaboración de Acta de Cierre del Proyecto | 2d | 2017-11-06 09:00 A | 2017-11-07 19:00 A |  | 100% |  |  |  | david | 16h | 16h |
| 62 | 1.1.4.1.3 | Traspaso de Información | 1d | 2017-11-06 09:00 A | 2017-11-06 19:00 A |  | 100% |  |  |  | samuel | 8h | 8h |
| 63 | 1.2 | **Proceso de Ingeniería** | 40d | 2017-09-25 08:00 | 2017-11-10 18:00 |  | 100% | 2017-09-25 09:00 | 2017-11-10 19:00 |  |  | 452.8h | 452.8h |
| 64 | 1.2.1 | **Software Staradmin** | 16d | 2017-09-25 08:00 | 2017-10-12 18:00 |  | 100% | 2017-09-25 09:00 | 2017-11-10 19:00 |  |  | 452.8h | 452.8h |
| 65 | 1.2.1.1 | **Requerimientos** | 6d | 2017-09-25 08:00 | 2017-09-30 18:00 |  | 100% | 2017-09-25 09:00 | 2017-09-27 19:00 |  |  | 48h | 48h |
| 66 | 1.2.1.1.1 | Realizar Recopilación de Requerimientos | 3d | 2017-09-25 09:00 A | 2017-09-27 19:00 A |  | 100% |  |  | start no earlier than 2017-09-25 08:00 | david | 24h | 24h |
| 67 | 1.2.1.1.2 | Elaborar Lista Maestra de Requerimientos | 2d | 2017-09-25 09:00 A | 2017-09-26 19:00 A |  | 100% |  |  | start no earlier than 2017-09-25 08:00 | david | 16h | 16h |
| 68 | 1.2.1.1.3 | Traspaso de Información | 1d | 2017-09-27 09:00 A | 2017-09-27 19:00 A | 67 | 100% |  |  | start no earlier than 2017-09-04 08:00 | david | 8h | 8h |
| 69 | 1.2.1.2 | **Análisis** | 5d | 2017-09-28 08:00 | 2017-10-03 18:00 |  | 100% | 2017-09-28 09:00 | 2017-10-11 13:00 |  |  | 120h | 120h |
| 70 | 1.2.1.2.1 | Elaborar Documentos de Análisis | 5d | 2017-09-28 09:00 A | 2017-10-03 19:00 A |  | 100% |  |  | start no earlier than 2017-09-28 08:00 | freddy | 40h | 40h |
| 71 | 1.2.1.2.2 | **Casos de Uso** | 15d | 2017-09-28 08:00 | 2017-10-14 18:00 |  | 100% | 2017-09-28 09:00 | 2017-10-11 13:00 |  |  | 80h | 80h |
| 72 | 1.2.1.2.2.1 | **Casos de Uso Modulo 1** | 2d | 2017-09-28 08:00 | 2017-09-29 18:00 |  | 100% | 2017-09-28 09:00 | 2017-09-29 19:00 |  |  | 16h | 16h |
| 73 | 1.2.1.2.2.1.1 | Entender la Problemática Actual | 1d | 2017-09-28 09:00 A | 2017-09-28 19:00 A |  | 100% |  |  |  | freddy | 8h | 8h |
| 74 | 1.2.1.2.2.1.2 | Elaborar Casos de Uso | 0.5d | 2017-09-29 09:00 A | 2017-09-29 13:00 A | 73 | 100% |  |  |  | freddy | 4h | 4h |
| 75 | 1.2.1.2.2.1.3 | Actualizar Glosario de Términos | 0.5d | 2017-09-29 15:00 A | 2017-09-29 19:00 A | 74 | 100% |  |  |  | freddy | 4h | 4h |
| 76 | 1.2.1.2.2.2 | **Caso de Uso Modulo 2** | 2d | 2017-10-02 08:00 | 2017-10-03 18:00 |  | 100% | 2017-10-02 09:00 | 2017-10-03 19:00 |  |  | 16h | 16h |
| 77 | 1.2.1.2.2.2.1 | Entender la Problemática Actual | 1d | 2017-10-02 09:00 A | 2017-10-02 19:00 A |  | 100% |  |  |  | freddy | 8h | 8h |
| 78 | 1.2.1.2.2.2.2 | Elaborar Casos de Uso | 0.5d | 2017-10-03 09:00 A | 2017-10-03 13:00 A | 77 | 100% |  |  |  | freddy | 4h | 4h |
| 79 | 1.2.1.2.2.2.3 | Actualizar Glosario de Términos | 0.5d | 2017-10-03 15:00 A | 2017-10-03 19:00 A | 78 | 100% |  |  |  | freddy | 4h | 4h |

| ID | WBS | Task | Duration | Start | Finish | Predecessors | Complete | Actual start | Actual finish | Constraint | Resources | Work | Actual work |
| --- | --- | --- | --- | --- | --- | --- | --- | --- | --- | --- | --- | --- | --- |
| 80 | 1.2.1.2.2.3 | **Caso de Uso Modulo 3** | 2d | 2017-10-04 08:00 | 2017-10-05 18:00 |  | 100% | 2017-10-04 09:00 | 2017-10-05 13:00 |  |  | 16h | 16h |
| 81 | 1.2.1.2.2.3.1 | Entender la Problemática Actual | 1d | 2017-10-04 09:00 A | 2017-10-04 19:00 A |  | 100% |  |  | start no earlier than 2017-10-04 08:00 | david | 8h | 8h |
| 82 | 1.2.1.2.2.3.2 | Elaborar Casos de Uso | 0.5d | 2017-10-05 09:00 A | 2017-10-05 13:00 A | 81 | 100% |  |  |  | david | 4h | 4h |
| 83 | 1.2.1.2.2.3.3 | Actualizar Glosario de Términos | 0.5d | 2017-10-05 09:00 A | 2017-10-05 13:00 A |  | 100% |  |  | start no earlier than 2017-10-05 08:00 | david | 4h | 4h |
| 84 | 1.2.1.2.2.4 | **Caso de Uso Modulo 4** | 3d | 2017-10-06 08:00 | 2017-10-09 18:00 |  | 100% | 2017-10-06 09:00 | 2017-10-09 13:00 |  |  | 16h | 16h |
| 85 | 1.2.1.2.2.4.1 | Entender la Problemática Actual | 1d | 2017-10-06 09:00 A | 2017-10-06 19:00 A |  | 100% |  |  | start no earlier than 2017-10-06 08:00 | david | 8h | 8h |
| 86 | 1.2.1.2.2.4.2 | Elaborar Caso de Uso | 0.5d | 2017-10-09 09:00 A | 2017-10-09 13:00 A |  | 100% |  |  | start no earlier than 2017-10-09 08:00 | david | 4h | 4h |
| 87 | 1.2.1.2.2.4.3 | Actualizar Glosario de Términos | 0.5d | 2017-10-09 09:00 A | 2017-10-09 13:00 A |  | 100% |  |  | start no earlier than 2017-10-09 08:00 | david | 4h | 4h |
| 88 | 1.2.1.2.2.5 | **Caso de Uso Modulo 5** | 2d | 2017-10-10 08:00 | 2017-10-11 18:00 |  | 100% | 2017-10-10 09:00 | 2017-10-11 13:00 |  |  | 16h | 16h |
| 89 | 1.2.1.2.2.5.1 | Entender la Problemática Actual | 1d | 2017-10-10 09:00 A | 2017-10-10 19:00 A |  | 100% |  |  | start no earlier than 2017-10-10 08:00 | david | 8h | 8h |
| 90 | 1.2.1.2.2.5.2 | Elabora Caso de Uso | 0.5d | 2017-10-11 09:00 A | 2017-10-11 13:00 A | 89 | 100% |  |  |  | david | 4h | 4h |
| 91 | 1.2.1.2.2.5.3 | Actualizar Glosario de Términos | 0.5d | 2017-10-11 09:00 A | 2017-10-11 13:00 A |  | 100% |  |  | start no earlier than 2017-10-11 09:00 | david | 4h | 4h |
| 92 | 1.2.1.3 | **Diseño** | 5d | 2017-10-12 08:00 | 2017-10-17 18:00 |  | 100% | 2017-10-12 09:00 | 2017-10-17 19:00 |  |  | 24h | 24h |
| 93 | 1.2.1.3.1 | Elaborar Documento de Diseño | 3d | 2017-10-12 09:00 A | 2017-10-14 19:00 A |  | 100% |  |  |  | freddy | 24h | 24h |
| 94 | 1.2.1.3.2 | Traspaso de Información | 2d | 2017-10-16 09:00 A | 2017-10-17 19:00 A | 93 | 100% |  |  |  |  |  |  |
| 95 | 1.2.1.4 | **Contrucción** | 14d | 2017-10-18 08:00 A | 2017-11-03 18:00 |  | 100% |  | 2017-11-02 18:00 |  |  | 200h | 200h |
| 96 | 1.2.1.4.1 | **Modulo 1** | 5d | 2017-10-18 08:00 A | 2017-10-23 18:00 A |  | 100% |  |  |  |  | 40h | 40h |
| 97 | 1.2.1.4.1.1 | **Contrucción Modulo Home** | 5d | 2017-10-18 08:00 A | 2017-10-23 18:00 A |  | 100% |  |  |  | keyla | 40h | 40h |
| 98 | 1.2.1.4.1.1.1 | Construción de la Vista Home | 4.88d | 2017-10-18 09:00 A | 2017-10-23 18:00 A |  | 100% |  |  | finish no earlier than 2017-10-23 18:00 |  |  |  |
| 99 | 1.2.1.4.2 | **Modulo 2** | 5d | 2017-10-23 08:00 A | 2017-10-27 18:00 A |  | 100% |  |  |  | keyla | 40h | 40h |
| 100 | 1.2.1.4.2.1 | **Contrucción Modulo Venta** | 5d | 2017-10-23 08:00 | 2017-10-27 18:00 |  | 100% | 2017-10-23 09:00 | 2017-10-26 19:00 |  |  |  |  |
| 101 | 1.2.1.4.2.1.1 | Construcción Controlador Venta | 2d | 2017-10-23 09:00 A | 2017-10-24 19:00 A |  | 100% |  |  |  |  |  |  |
| 102 | 1.2.1.4.2.1.2 | Cosntrucción de la vista Venta | 1d | 2017-10-25 09:00 A | 2017-10-25 19:00 A | 101 | 100% |  |  |  |  |  |  |
| 103 | 1.2.1.4.2.1.3 | Cosntrucción del Modelo Venta | 1d | 2017-10-26 09:00 A | 2017-10-26 19:00 A | 102 | 100% |  |  |  |  |  |  |

| ID | WBS | Task | Duration | Start | Finish | Predecessors | Complete | Actual start | Actual finish | Constraint | Resources | Work | Actual work |
| --- | --- | --- | --- | --- | --- | --- | --- | --- | --- | --- | --- | --- | --- |
| 104 | 1.2.1.4.3 | **Modulo 3** | 5d | 2017-10-18 08:00 A | 2017-10-23 18:00 A |  | 100% |  |  |  | david | 40h | 40h |
| 105 | 1.2.1.4.3.1 | **Contrucción Modulo Compra** | 5d | 2017-10-18 08:00 | 2017-10-23 18:00 |  | 100% | 2017-10-18 09:00 | 2017-10-20 19:00 |  |  |  |  |
| 106 | 1.2.1.4.3.1.1 | Construcción Controlador Compra | 1d | 2017-10-18 09:00 A | 2017-10-18 19:00 A |  | 100% |  |  | start no earlier than 2017-10-18 08:00 |  |  |  |
| 107 | 1.2.1.4.3.1.2 | Construcción de la Vista Compra | 1d | 2017-10-19 09:00 A | 2017-10-19 19:00 A | 106 | 100% |  |  |  |  |  |  |
| 108 | 1.2.1.4.3.1.3 | Construcción del Modelo Compra | 1d | 2017-10-20 09:00 A | 2017-10-20 19:00 A | 107 | 100% |  |  |  |  |  |  |
| 109 | 1.2.1.4.4 | **Modulo 4** | 5d | 2017-10-23 08:00 A | 2017-10-27 18:00 |  | 100% |  | 2017-10-27 19:00 |  | david | 40h | 40h |
| 110 | 1.2.1.4.4.1 | **Contrucción Modulo Productos** | 5d | 2017-10-23 08:00 | 2017-10-27 18:00 |  | 100% | 2017-10-23 09:00 | 2017-10-27 19:00 |  |  |  |  |
| 111 | 1.2.1.4.4.1.1 | Construcción Controlador Productos | 2d | 2017-10-23 09:00 A | 2017-10-24 19:00 A |  | 100% |  |  | start no earlier than 2017-10-23 08:00 |  |  |  |
| 112 | 1.2.1.4.4.1.2 | Construcción de la Vista Productos | 2d | 2017-10-25 09:00 A | 2017-10-26 19:00 A | 111 | 100% |  |  |  |  |  |  |
| 113 | 1.2.1.4.4.1.3 | Consstrucción del Modelo Productos | 1d | 2017-10-27 09:00 A | 2017-10-27 19:00 A | 112 | 100% |  |  |  |  |  |  |
| 114 | 1.2.1.4.5 | **Modulo 5** | 5d | 2017-10-27 08:00 A | 2017-11-02 18:00 A |  | 100% |  |  |  | david | 40h | 40h |
| 115 | 1.2.1.4.5.1 | **Construcción Modulo Usuarios** | 5d | 2017-10-27 08:00 | 2017-11-02 18:00 |  | 100% | 2017-10-27 09:00 | 2017-10-31 19:00 |  |  |  |  |
| 116 | 1.2.1.4.5.1.1 | Construcción Controlador Usuarios | 2d | 2017-10-27 09:00 A | 2017-10-28 19:00 A |  | 100% |  |  | start no earlier than 2017-10-27 08:00 |  |  |  |
| 117 | 1.2.1.4.5.1.2 | Construcción de la Vista Usuarios | 1d | 2017-10-30 09:00 A | 2017-10-30 19:00 A | 116 | 100% |  |  |  |  |  |  |
| 118 | 1.2.1.4.5.1.3 | Construción del Modulo Usuarios | 1d | 2017-10-31 09:00 A | 2017-10-31 19:00 A | 117 | 100% |  |  |  |  |  |  |
| 119 | 1.2.1.5 | **Pruebas** | 5d | 2017-11-02 08:00 A | 2017-11-07 18:00 |  | 100% |  | 2017-11-08 18:00 |  |  | 36.8h | 36.8h |
| 120 | 1.2.1.5.1 | **Pruebas Internas** | 5d | 2017-11-02 08:00 A | 2017-11-07 18:00 |  | 100% |  | 2017-11-06 11:24 |  |  | 12.8h | 12.8h |
| 121 | 1.2.1.5.1.1 | **Pruebas Modulo 1** | 1d | 2017-11-02 08:00 A | 2017-11-02 18:00 A |  | 100% |  |  |  | keyla | 8h | 8h |
| 122 | 1.2.1.5.1.1.1 | Elaborar Pruebas de Modulo | 0.3d | 2017-11-02 09:00 A | 2017-11-02 11:24 A |  | 100% |  |  | start no earlier than 2017-11-02 08:00 |  |  |  |
| 123 | 1.2.1.5.1.1.2 | Elaborar Informe de Prueba | 0.3d | 2017-11-02 11:24 A | 2017-11-02 15:48 A | 122 | 100% |  |  |  |  |  |  |
| 124 | 1.2.1.5.1.1.3 | Traspaso de Información | 0.3d | 2017-11-02 11:24 A | 2017-11-02 15:48 A |  | 100% |  |  | start no earlier than 2017-11-02 11:24 |  |  |  |
| 125 | 1.2.1.5.1.2 | **Pruebas de Modulo 2 y 3** | 0.3d | 2017-11-03 08:00 A | 2017-11-03 10:24 |  | 100% |  | 2017-11-03 15:48 |  | keyla | 2.4h | 2.4h |
| 126 | 1.2.1.5.1.2.1 | Elaborar Pruebas de Modulo | 0.3d | 2017-11-03 09:00 A | 2017-11-03 11:24 A |  | 100% |  |  |  |  |  |  |
| 127 | 1.2.1.5.1.2.2 | Elaborar Informe de Prueba | 0.3d | 2017-11-03 11:24 A | 2017-11-03 15:48 A | 126 | 100% |  |  |  |  |  |  |
| 128 | 1.2.1.5.1.2.3 | Traspaso de Información | 0.3d | 2017-11-03 11:24 A | 2017-11-03 15:48 A |  | 100% |  |  | start no earlier than 2017-11-03 11:24 |  |  |  |

| ID | WBS | Task | Duration | Start | Finish | Predecessors | Complete | Actual start | Actual finish | Constraint | Resources | Work | Actual work |
| --- | --- | --- | --- | --- | --- | --- | --- | --- | --- | --- | --- | --- | --- |
| 129 | 1.2.1.5.1.3 | **Pruebas de Modulo 4 y 5** | 0.3d | 2017-11-06 08:00 A | 2017-11-06 10:24 |  | 100% |  | 2017-11-06 11:24 |  | keyla | 2.4h | 2.4h |
| 130 | 1.2.1.5.1.3.1 | Elaborar Pruebas de Modulo | 0.3d | 2017-11-06 09:00 A | 2017-11-06 11:24 A |  | 100% |  |  |  |  |  |  |
| 131 | 1.2.1.5.1.3.2 | Elaborar Informe de Prueba | 0.3d | 2017-11-06 09:00 A | 2017-11-06 11:24 A |  | 100% |  |  | start no earlier than 2017-11-06 09:00 |  |  |  |
| 132 | 1.2.1.5.1.3.3 | Traspaso de Información | 0.3d | 2017-11-06 09:00 A | 2017-11-06 11:24 A |  | 100% |  |  | start no earlier than 2017-11-06 09:00 |  |  |  |
| 133 | 1.2.1.5.2 | **Pruebas Externas** | 3d | 2017-11-07 08:00 A | 2017-11-09 18:00 |  | 100% |  | 2017-11-08 18:00 |  |  | 24h | 24h |
| 134 | 1.2.1.5.2.1 | **Pruebas de Modulo 1, 2 y 3** | 2d | 2017-11-07 08:00 A | 2017-11-08 18:00 A |  | 100% |  |  |  | samuel | 16h | 16h |
| 135 | 1.2.1.5.2.1.1 | Elaborar Pruebas de Modulos | 1d | 2017-11-07 09:00 A | 2017-11-07 19:00 A |  | 100% |  |  | start no earlier than 2017-11-07 08:00 |  |  |  |
| 136 | 1.2.1.5.2.1.2 | Elaborar Informe de Pruebas | 0.5d | 2017-11-07 09:00 A | 2017-11-07 13:00 A |  | 100% |  |  | start no earlier than 2017-11-07 08:00 |  |  |  |
| 137 | 1.2.1.5.2.1.3 | Traspaso de Información | 0.5d | 2017-11-07 09:00 A | 2017-11-07 13:00 A | 136 | 100% |  |  | start no earlier than 2017-11-07 08:00 |  |  |  |
| 138 | 1.2.1.5.2.2 | **Pruebas de Modulo 4 y 5** | 1d | 2017-11-07 08:00 A | 2017-11-07 18:00 |  | 100% |  | 2017-11-07 19:00 |  | samuel | 8h | 8h |
| 139 | 1.2.1.5.2.2.1 | Elaborar Pruebas de Modulos | 1d | 2017-11-07 09:00 A | 2017-11-07 19:00 A |  | 100% |  |  |  |  |  |  |
| 140 | 1.2.1.5.2.2.2 | Elaborar Informe de Pruebas | 0.5d | 2017-11-07 09:00 A | 2017-11-07 13:00 A | 139 | 100% |  |  |  |  |  |  |
| 141 | 1.2.1.5.2.2.3 | Traspaso de Información | 0.5d | 2017-11-07 09:00 A | 2017-11-07 13:00 A | 140 | 100% |  |  |  |  |  |  |
| 142 | 1.2.1.6 | **Implementación** | 3d | 2017-11-08 08:00 | 2017-11-10 18:00 |  | 100% | 2017-11-08 09:00 | 2017-11-10 19:00 |  |  | 24h | 24h |
| 143 | 1.2.1.6.1 | **Guia de Usuario** | 3d | 2017-11-08 08:00 | 2017-11-10 18:00 |  | 100% | 2017-11-08 09:00 | 2017-11-10 19:00 |  |  | 24h | 24h |
| 144 | 1.2.1.6.1.1 | Elaborar Manual de Usuario | 2d | 2017-11-08 09:00 A | 2017-11-09 19:00 A |  | 100% |  |  | start no earlier than 2017-11-08 08:00 | david | 16h | 16h |
| 145 | 1.2.1.6.1.2 | Traspaso de Información | 1d | 2017-11-10 09:00 A | 2017-11-10 19:00 A | 144 | 100% |  |  |  | david | 8h | 8h |
| 146 | 1.3 | **Inducción de Personal** | 3d | 2017-11-06 08:00 | 2017-11-08 18:00 |  | 100% | 2017-11-06 09:00 | 2017-11-11 19:00 |  |  | 64h | 64h |
| 147 | 1.3.1 | Establecer Personal para Inducción | 1d | 2017-11-06 09:00 A | 2017-11-06 19:00 A |  | 100% |  |  |  | samuel | 8h | 8h |
| 148 | 1.3.2 | Realizar Inducción al Personal | 3d | 2017-11-06 09:00 A | 2017-11-08 19:00 A |  | 100% |  |  |  | samuel | 24h | 24h |
| 149 | 1.3.3 | Verificar Proceso de Inducción | 1d | 2017-11-09 09:00 A | 2017-11-09 19:00 A | 148 | 100% |  |  |  | freddy | 8h | 8h |
| 150 | 1.3.4 | Elaborar Certificado de Proceso de Inducción de Personal | 1d | 2017-11-10 09:00 A | 2017-11-10 19:00 A | 149 | 100% |  |  |  | freddy | 8h | 8h |
| 151 | 1.3.5 | Traspaso de Información | 1d | 2017-11-11 09:00 A | 2017-11-11 19:00 A | 150 | 100% |  |  |  | freddy | 8h | 8h |
| 152 | 1.3.6 | Pasar de Área de Desarrollo a Personal Capacitado | 1d | 2017-11-06 09:00 A | 2017-11-06 19:00 A |  | 100% |  |  |  | samuel | 8h | 8h |

| ID | WBS | Task | Duration | Start | Finish | Complete | Actual start | Actual finish | Constraint | Resources | Work | Actual work |
| --- | --- | --- | --- | --- | --- | --- | --- | --- | --- | --- | --- | --- |
| 153 | 1.4 | **Proceso de Aseguramiento de la Calidad del Proyecto** | 57.88d | 2017-09-04 08:00 | 2017-11-10 18:00 | 100% | 2017-09-18 09:00 | 2017-11-07 19:00 |  |  |  |  |
| 154 | 1.4.1 | **Primera Revisión** | 11d | 2017-09-04 08:00 | 2017-09-15 18:00 | 100% | 2017-09-18 09:00 | 2017-09-22 19:00 |  |  |  |  |
| 155 | 1.4.1.1 | Correción de puntos faltantes | 4d | 2017-09-19 09:00 A | 2017-09-22 19:00 A | 100% |  |  | start no earlier than 2017-09-19 08:00 |  |  |  |
| 156 | 1.4.1.2 | Traspaso de Información | 1d | 2017-09-18 09:00 A | 2017-09-18 19:00 A | 100% |  |  | start no earlier than 2017-09-18 08:00 |  |  |  |
| 157 | 1.4.2 | **Segunda Revisión** | 20d | 2017-09-25 08:00 | 2017-10-17 18:00 | 100% | 2017-09-25 09:00 | 2017-10-09 19:00 |  |  |  |  |
| 158 | 1.4.2.1 | Correción de puntos faltantes | 13d | 2017-09-25 09:00 A | 2017-10-09 19:00 A | 100% |  |  |  |  |  |  |
| 159 | 1.4.2.2 | Traspaso de Información | 1d | 2017-09-25 09:00 A | 2017-09-25 19:00 A | 100% |  |  |  |  |  |  |
| 160 | 1.4.3 | **Tercera Revisión** | 16d | 2017-10-23 08:00 | 2017-11-10 18:00 | 100% | 2017-10-23 09:00 | 2017-11-07 19:00 |  |  |  |  |
| 161 | 1.4.3.1 | Correción de puntos faltantes | 13d | 2017-10-23 09:00 A | 2017-11-07 19:00 A | 100% |  |  |  |  |  |  |
| 162 | 1.4.3.2 | Traspaso de Información | 1d | 2017-10-23 09:00 A | 2017-10-23 19:00 A | 100% |  |  |  |  |  |  |
| 163 | 1.5 | **Reuniones Internas XX** | 60d | 2017-09-02 09:00 A | 2017-11-11 19:00 | 100% |  | 2017-11-11 18:00 |  |  | 312h | 312h |
| 164 | 1.5.1 | **Reunión Semanal 1** | 1d | 2017-09-09 08:00 | 2017-09-09 18:00 A | 100% | 2017-09-02 09:00 |  |  | samuel; david; keyla | 24h | 24h |
| 165 | 1.5.1.1 | Elaborar Acta de Reunión | 0.5d | 2017-09-02 09:00 A | 2017-09-02 13:00 A | 100% |  |  | start no earlier than 2017-09-02 08:00 |  |  |  |
| 166 | 1.5.1.2 | Traspaso de Información | 0.5d | 2017-09-09 09:00 A | 2017-09-09 13:00 A | 100% |  |  |  |  |  |  |
| 167 | 1.5.2 | **Reunión Semanal 2** | 1d | 2017-09-16 08:00 | 2017-09-16 18:00 A | 100% | 2017-09-09 09:00 |  |  | david; freddy; keyla; samuel | 32h | 32h |
| 168 | 1.5.2.1 | Elaborar Acta de Reunión | 0.5d | 2017-09-09 09:00 A | 2017-09-09 13:00 A | 100% |  |  | start no earlier than 2017-09-09 08:00 |  |  |  |
| 169 | 1.5.2.2 | Traspaso de Información | 0.5d | 2017-09-09 09:00 A | 2017-09-09 13:00 A | 100% |  |  | start no earlier than 2017-09-09 08:00 |  |  |  |
| 170 | 1.5.3 | **Reunión Semanal 3** | 1d | 2017-09-23 08:00 | 2017-09-23 18:00 A | 100% | 2017-09-16 09:00 |  |  | david; freddy; keyla; samuel | 32h | 32h |
| 171 | 1.5.3.1 | Elaborar Acta de Reunión | 0.5d | 2017-09-16 09:00 A | 2017-09-16 13:00 A | 100% |  |  | start no earlier than 2017-09-16 08:00 |  |  |  |
| 172 | 1.5.3.2 | Traspaso de Información | 0.5d | 2017-09-16 09:00 A | 2017-09-16 13:00 A | 100% |  |  | start no earlier than 2017-09-16 08:00 |  |  |  |
| 173 | 1.5.4 | **Reunión Semanal 4** | 1d | 2017-09-30 08:00 A | 2017-09-30 18:00 A | 100% |  |  |  | david; freddy; keyla; samuel | 32h | 32h |
| 174 | 1.5.4.1 | Elaborar Acta de Reunión | 0.5d | 2017-09-30 09:00 A | 2017-09-30 13:00 A | 100% |  |  |  |  |  |  |
| 175 | 1.5.4.2 | Traspaso de Información | 0.5d | 2017-09-30 09:00 A | 2017-09-30 13:00 A | 100% |  |  |  |  |  |  |
| 176 | 1.5.5 | **Reunión Semanal 5** | 1d | 2017-10-07 08:00 A | 2017-10-07 18:00 | 100% |  | 2017-10-07 19:00 |  | david; freddy; keyla; samuel | 32h | 32h |
| 177 | 1.5.5.1 | Elaborar Acta de Reunión | 1d | 2017-10-07 09:00 A | 2017-10-07 19:00 A | 100% |  |  |  |  |  |  |
| 178 | 1.5.5.2 | Traspaso de Información | 1d | 2017-10-07 09:00 A | 2017-10-07 19:00 A | 100% |  |  |  |  |  |  |

| ID | WBS | Task | Duration | Start | Finish | Complete | Remaining | Actual start | Actual finish | Resources | Work | Actual work |
| --- | --- | --- | --- | --- | --- | --- | --- | --- | --- | --- | --- | --- |
| 179 | 1.5.6 | **Reunión Semanal 6** | 1d | 2017-10-14 08:00 A | 2017-10-14 18:00 A | 100% |  |  |  | david; freddy; keyla; samuel | 32h | 32h |
| 180 | 1.5.6.1 | Elaborar Acta de Reunión | 0.5d | 2017-10-14 09:00 A | 2017-10-14 13:00 A | 100% |  |  |  |  |  |  |
| 181 | 1.5.6.2 | Traspaso de Información | 0.5d | 2017-10-14 09:00 A | 2017-10-14 13:00 A | 100% |  |  |  |  |  |  |
| 182 | 1.5.7 | **Reunión Semanal 7** | 1d | 2017-10-21 08:00 A | 2017-10-21 18:00 A | 100% |  |  |  | david; freddy; keyla; samuel | 32h | 32h |
| 183 | 1.5.7.1 | Elaborar Acta de Reunión | 0.5d | 2017-10-21 09:00 A | 2017-10-21 13:00 A | 100% |  |  |  |  |  |  |
| 184 | 1.5.7.2 | Traspaso de Información | 0.5d | 2017-10-21 09:00 A | 2017-10-21 13:00 A | 100% |  |  |  |  |  |  |
| 185 | 1.5.8 | **Reaunión Semanal 8** | 1d | 2017-10-28 08:00 A | 2017-10-28 18:00 A | 100% |  |  |  | david; freddy; keyla; samuel | 32h | 32h |
| 186 | 1.5.8.1 | Elaborar Acta de Reaunión | 0.5d | 2017-10-28 09:00 A | 2017-10-28 13:00 A | 100% |  |  |  |  |  |  |
| 187 | 1.5.8.2 | Traspaso de Información | 0.5d | 2017-10-28 09:00 A | 2017-10-28 13:00 A | 100% |  |  |  |  |  |  |
| 188 | 1.5.9 | **Reunión Semanal 9** | 1d | 2017-11-04 08:00 A | 2017-11-04 18:00 A | 100% |  |  |  | david; freddy; keyla; samuel | 32h | 32h |
| 189 | 1.5.9.1 | Elaborar Acta de Reunión | 0.5d | 2017-11-04 09:00 A | 2017-11-04 13:00 A | 100% |  |  |  |  |  |  |
| 190 | 1.5.9.2 | Traspaso de Información | 0.5d | 2017-11-04 09:00 A | 2017-11-04 13:00 A | 100% |  |  |  |  |  |  |
| 191 | 1.5.10 | **Reunión Final** | 1d | 2017-11-11 08:00 A | 2017-11-11 18:00 A | 100% |  |  |  | david; freddy; keyla; samuel | 32h | 32h |
| 192 | 1.5.10.1 | Elaborar Acta de Reunión | 0.5d | 2017-11-11 09:00 A | 2017-11-11 13:00 A | 100% |  |  |  |  |  |  |
| 193 | 1.5.10.2 | Traspaso de Información | 0.5d | 2017-11-11 09:00 A | 2017-11-11 13:00 A | 100% |  |  |  |  |  |  |
| 194 | 1.6 | **Reunión Externa XPERTSOLUTIONS-CLIENTE** | 48d | 2017-09-18 08:00 | 2017-11-13 18:00 | 81% | 9.23d | 2017-09-18 09:00 |  |  | 73.6h | 41.6h |
| 195 | 1.6.1 | **Primera Presentación del Proyecto** | 1d | 2017-09-18 09:00 A | 2017-09-18 19:00 | 100% |  |  | 2017-09-18 11:24 |  | 9.6h | 9.6h |
| 196 | 1.6.1.1 | Reunión Externa con LIMBO E.I.R.L | 0.3d | 2017-09-18 09:00 A | 2017-09-18 11:24 A | 100% |  |  |  | david; freddy; keyla; samuel | 9.6h | 9.6h |
| 197 | 1.6.1.2 | Acta de reunión de acuerdos tomados | 0.3d | 2017-09-18 09:00 A | 2017-09-18 11:24 A | 100% |  |  |  |  |  |  |
| 198 | 1.6.1.3 | Traspaso de Información | 0.1d | 2017-09-18 09:00 A | 2017-09-18 09:48 A | 100% |  |  |  |  |  |  |
| 199 | 1.6.2 | **Segúnda Presentación del Proyecto** | 1d | 2017-10-18 08:00 A | 2017-10-18 18:00 | 100% |  |  | 2017-10-18 19:00 | david; freddy; keyla; samuel | 32h | 32h |
| 200 | 1.6.2.1 | Reunión Externa con LIMBO E.I.R.L | 1d | 2017-10-18 09:00 A | 2017-10-18 19:00 A | 100% |  |  |  |  |  |  |
| 201 | 1.6.2.2 | Acta de reunión de acuerdos tomados | 0.1d | 2017-10-18 09:00 A | 2017-10-18 09:48 A | 100% |  |  |  |  |  |  |
| 202 | 1.6.2.3 | Traspaso de Información | 0.3d | 2017-10-18 09:00 A | 2017-10-18 11:24 A | 100% |  |  |  |  |  |  |

| ID | WBS | Task | Duration | Start | Finish | Total slack | Resources | Work |
| --- | --- | --- | --- | --- | --- | --- | --- | --- |
| 203 | 1.6.3 | **Tercera Presentación del Proyecto** | 1d | 2017-11-13 08:00 | 2017-11-13 18:00 |  | david; freddy; keyla; samuel | 32h |
| 204 | 1.6.3.1 | Reunión Externa con LIMBO E.I.R.L | 0.3d | 2017-11-13 09:00 | 2017-11-13 11:24 | 0.57d |  |  |
| 205 | 1.6.3.2 | Acta de reunión de acuerdos tomados | 0.1d | 2017-11-13 09:00 | 2017-11-13 09:48 | 0.78d |  |  |
| 206 | 1.6.3.3 | Traspaso de Información | 0.1d | 2017-11-13 09:00 | 2017-11-13 09:48 | 0.78d |  |  |
